# UOW Book System Upgrade

Schedule from MS Project, 2020-04-03 to 2020-05-20, costs in $, A marks actual dates.

## Calendars

- Standard: Mon-Fri 09:00-12:00, 13:00-18:00; Sat-Sun off. Exceptions (off unless hours are given): 2020-04-10 (Good Friday), 2020-05-01 (Labour Day), 2020-05-07 (Vesak).

## Resources

| Resource | Rate |
| --- | --- |
| Whitney Chng | 17.5 |
| Hor Jun Hao | 17.5 |
| Tay Yang Shun | 17.5 |
| Terrence Yeo | 17.5 |
| Ang Chee Wee | 17.5 |

## Schedule

| ID | WBS | Task | Type | Duration | Start | Finish | Predecessors | Complete | Baseline start | Baseline finish | Baseline duration | Resources | Work | Actual work | Cost | Baseline cost | Actual cost |
| --- | --- | --- | --- | --- | --- | --- | --- | --- | --- | --- | --- | --- | --- | --- | --- | --- | --- |
| 1 | 1 | **Project Initiation** |  | 3.88d | 2020-04-03 A | 2020-04-08 A |  | 100% | 2020-04-03 | 2020-04-09 | 5d |  | 51.06h | 51.06h | 893.59 | 1,190 | 893.59 |
| 2 | 1.1 | Teaming Forming |  | 0.88d | 2020-04-03 A | 2020-04-03 A |  | 100% | 2020-04-03 | 2020-04-03 | 1d | Whitney Chng [20%] | 3.06h | 3.06h | 53.59 | 70 | 53.59 |
| 3 | 1.2 | Project Charter |  | 2d | 2020-04-03 A | 2020-04-07 A | 2 | 100% | 2020-04-06 | 2020-04-07 | 2d | Hor Jun Hao; Whitney Chng [60%] | 32h | 32h | 560 | 560 | 560 |
| 4 | 1.3 | Request Approval of Project Charter |  | 1d | 2020-04-07 A | 2020-04-08 A | 3 | 100% | 2020-04-08 | 2020-04-09 | 2d | Hor Jun Hao [10%]; Whitney Chng [10%] | 16h | 16h | 280 | 560 | 280 |
| 5 | 1.4 | Complete Initation | milestone | 0d | 2020-04-08 A | 2020-04-08 A | 4 | 100% | 2020-04-09 | 2020-04-09 | 0d |  |  |  |  |  |  |
| 6 | 2 | **Project Planning** |  | 4d | 2020-04-08 A | 2020-04-15 A |  | 100% | 2020-04-13 | 2020-04-16 | 4d |  | 96h | 96h | 5,680 | 1,680 | 5,680 |
| 7 | 2.1 | Document Current System |  | 2d | 2020-04-08 A | 2020-04-13 A | 5 | 100% | 2020-04-13 | 2020-04-14 | 2d | Ang Chee Wee; Hor Jun Hao | 32h | 32h | 560 | 560 | 560 |
| 8 | 2.2 | Determine Project Requirements |  | 2d | 2020-04-08 A | 2020-04-13 A | 5 | 100% | 2020-04-13 | 2020-04-14 | 2d | Tay Yang Shun; Whitney Chng | 32h | 32h | 560 | 560 | 560 |
| 9 | 2.3 | Research on Programming Platforms |  | 2d | 2020-04-13 A | 2020-04-15 A | 8, 7 | 100% | 2020-04-15 | 2020-04-16 | 2d | Ang Chee Wee; Terrence Yeo | 32h | 32h | 4,560 | 560 | 4,560 |
| 10 | 2.4 | Complete Planning | milestone | 0d | 2020-04-15 A | 2020-04-15 A | 9 | 100% | 2020-04-16 | 2020-04-16 | 0d |  |  |  |  |  |  |
| 11 | 3 | **Project Development** |  | 11d | 2020-04-15 A | 2020-04-30 A |  | 100% | 2020-04-17 | 2020-05-04 | 11d |  | 179.75h | 179.75h | 3,145.62 | 3,458 | 3,145.62 |
| 12 | 3.1 | **Create User-Interface Design** |  | 11d | 2020-04-15 A | 2020-04-30 A |  | 100% | 2020-04-17 | 2020-04-27 | 7d |  | 71.8h | 71.8h | 1,256.5 | 1,673 | 1,256.5 |
| 13 | 3.1.1 | Login Page |  | 3d | 2020-04-15 A | 2020-04-20 A | 10 | 100% | 2020-04-17 | 2020-04-22 | 4d | Tay Yang Shun | 20.4h | 20.4h | 357 | 476 | 357 |
| 14 | 3.1.2 | Student Page |  | 3d | 2020-04-20 A | 2020-04-23 A | 13 | 100% | 2020-04-23 | 2020-04-27 | 3d | Tay Yang Shun | 24h | 24h | 420 | 420 | 420 |
| 15 | 3.1.3 | Staff Page |  | 3d | 2020-04-15 A | 2020-04-20 A | 10 | 100% | 2020-04-17 | 2020-04-21 | 3d | Terrence Yeo | 20.4h | 20.4h | 357 | 357 | 357 |
| 16 | 3.1.4 | User Admin Page |  | 0.88d | 2020-04-30 A | 2020-04-30 A | 18 | 100% | 2020-04-22 | 2020-04-24 | 3d | Terrence Yeo | 7h | 7h | 122.5 | 420 | 122.5 |
| 17 | 3.2 | Create Database |  | 7d | 2020-04-15 A | 2020-04-24 A | 10 | 100% | 2020-04-17 | 2020-04-21 | 3d | Ang Chee Wee | 47.6h | 47.6h | 833 | 357 | 833 |
| 18 | 3.3 | Develop System Functionalities |  | 3d | 2020-04-24 A | 2020-04-29 A | 14, 17 | 100% | 2020-04-28 | 2020-05-04 | 4d | Ang Chee Wee; Tay Yang Shun; Terrence Yeo | 60.35h | 60.35h | 1,056.12 | 1,428 | 1,056.12 |
| 19 | 3.4 | Complete Development | milestone | 0d | 2020-04-30 A | 2020-04-30 A | 16 | 100% | 2020-05-04 | 2020-05-04 | 0d |  |  |  |  |  |  |
| 20 | 4 | **Project Testing** |  | 9d | 2020-04-30 A | 2020-05-15 A |  | 100% | 2020-05-05 | 2020-05-14 | 7d |  | 104h | 104h | 1,820 | 1,260 | 1,820 |
| 21 | 4.1 | Perform System Testing |  | 2d | 2020-04-30 A | 2020-05-05 A | 19 | 100% | 2020-05-05 | 2020-05-06 | 2d | Ang Chee Wee; Terrence Yeo | 16h | 16h | 280 | 280 | 280 |
| 22 | 4.2 | Document and Correct Issues Found |  | 2d | 2020-05-05 A | 2020-05-08 A | 21 | 100% | 2020-05-08 | 2020-05-11 | 2d | Tay Yang Shun | 16h | 16h | 280 | 280 | 280 |
| 23 | 4.3 | Request Final Approval |  | 1d | 2020-05-08 A | 2020-05-11 A | 22 | 100% | 2020-05-12 | 2020-05-12 | 1d | Hor Jun Hao | 8h | 8h | 140 | 140 | 140 |
| 24 | 4.4 | Final System Development |  | 4d | 2020-05-11 A | 2020-05-15 A | 23 | 100% | 2020-05-13 | 2020-05-14 | 2d | Ang Chee Wee [40%]; Tay Yang Shun [40%]; Terrence Yeo [40%]; Hor Jun Hao [40%]; Whitney Chng [40%] | 64h | 64h | 1,120 | 560 | 1,120 |
| 25 | 4.5 | Complete Testing | milestone | 0d | 2020-05-15 A | 2020-05-15 A | 24 | 100% | 2020-05-14 | 2020-05-14 | 0d |  |  |  |  |  |  |

| ID | WBS | Task | Type | Duration | Start | Finish | Predecessors | Complete | Baseline start | Baseline finish | Baseline duration | Constraint | Resources | Work | Actual work | Cost | Baseline cost | Actual cost |
| --- | --- | --- | --- | --- | --- | --- | --- | --- | --- | --- | --- | --- | --- | --- | --- | --- | --- | --- |
| 26 | 5 | **Project Presentation** |  | 3d | 2020-05-15 A | 2020-05-20 A |  | 100% | 2020-05-15 | 2020-05-19 | 3d |  |  | 16h | 16h | 280 | 980 | 280 |
| 27 | 5.1 | Video Making |  | 2d | 2020-05-15 A | 2020-05-19 A | 25 | 100% | 2020-05-15 | 2020-05-19 | 2d |  | Hor Jun Hao [50%]; Terrence Yeo [50%] | 16h | 16h | 280 | 280 | 280 |
| 28 | 5.2 | Project Completed | milestone | 0d | 2020-05-20 A | 2020-05-20 A | 27 | 100% | 2020-05-20 | 2020-05-20 | 0d |  |  |  |  |  |  |  |
| 29 | 6 | **Meeting** |  | 22.12d | 2020-04-03 A | 2020-05-08 A |  | 100% | 2020-04-03 | 2020-05-15 | 27.12d |  |  | 20h | 20h | 350 | 350 | 350 |
| 30 | 6.1 | Meeting 1 |  | 1h | 2020-04-03 A | 2020-04-03 A |  | 100% | 2020-04-03 | 2020-04-03 | 1h | start no earlier than 2020-04-03 | Hor Jun Hao [10%]; Tay Yang Shun [10%]; Terrence Yeo [10%]; Whitney Chng [10%]; Ang Chee Wee [10%] | 5h | 5h | 87.5 | 87.5 | 87.5 |
| 31 | 6.2 | Meeting 2 |  | 1h | 2020-04-20 A | 2020-04-20 A |  | 100% | 2020-04-20 | 2020-04-20 | 1h | start no earlier than 2020-04-20 | Hor Jun Hao [10%]; Tay Yang Shun [10%]; Terrence Yeo [10%]; Whitney Chng [10%]; Ang Chee Wee [10%] | 5h | 5h | 87.5 | 87.5 | 87.5 |
| 32 | 6.3 | Meeting 3 |  | 1h | 2020-04-30 A | 2020-04-30 A |  | 100% | 2020-04-30 | 2020-04-30 | 1h | start no earlier than 2020-04-30 | Hor Jun Hao [10%]; Tay Yang Shun [10%]; Terrence Yeo [10%]; Whitney Chng [10%]; Ang Chee Wee [10%] | 5h | 5h | 87.5 | 87.5 | 87.5 |
| 33 | 6.4 | Meeting 4 |  | 1h | 2020-05-08 A | 2020-05-08 A |  | 100% | 2020-05-15 | 2020-05-15 | 1h | start no earlier than 2020-05-15 | Hor Jun Hao [10%]; Tay Yang Shun [10%]; Terrence Yeo [10%]; Ang Chee Wee [10%]; Whitney Chng [10%] | 5h | 5h | 87.5 | 87.5 | 87.5 |
